# Projeto SCM

Schedule from MS Project, 2018-05-26 to 2018-07-28, costs in R$, A marks actual dates.

## Calendars

- Padrão: Mon-Fri 09:00-12:00, 13:00-18:00; Sat-Sun off.

## Resources

| Resource | Rate |
| --- | --- |
| Daniel | 100 |
| Tássio | 100 |
| Carol | 100 |

## Schedule

| ID | WBS | Task | Duration | Start | Finish | Predecessors | Complete | Remaining | Total slack | Constraint | Resources | Work | Actual work | Cost | Actual cost |
| --- | --- | --- | --- | --- | --- | --- | --- | --- | --- | --- | --- | --- | --- | --- | --- |
| 1 | 1 | **Projeto SCM** | 45d? | 2018-05-26 00:00 A | 2018-07-28 02:00 |  | 56% | 19.72d? | 0d |  |  | 262.04h | 120.04h | 26,204.35 | 12,004.35 |
| 2 | 1.1 | **Prospecção** | 8d | 2018-05-26 00:00 A | 2018-06-06 18:00 A |  | 100% |  |  |  |  | 15h | 15h | 1,500 | 1,500 |
| 3 | 1.1.1 | Estudar Dominio | 1d | 2018-05-26 00:00 A | 2018-05-27 03:00 A |  | 100% |  |  | start no earlier than 2018-05-25 09:00 | Daniel | 1h | 1h | 100 | 100 |
| 4 | 1.1.2 | Reunir com Fornecedor de Requisitos | 1d | 2018-05-27 03:00 A | 2018-05-29 01:00 A | 3 | 100% |  |  |  | Daniel | 3h | 3h | 300 | 300 |
| 5 | 1.1.3 | Redigir DRE Preliminar | 1d | 2018-05-29 01:00 A | 2018-05-30 04:00 A | 4 | 100% |  |  |  | Daniel | 3h | 3h | 300 | 300 |
| 6 | 1.1.4 | Revisar DRE Preliminar | 1d | 2018-05-30 09:00 A | 2018-05-31 13:00 A | 5 | 100% |  |  |  | Tássio | 1h | 1h | 100 | 100 |
| 7 | 1.1.5 | **Estimativa.Prel.Tam** | 1d | 2018-06-01 09:00 A | 2018-06-03 18:00 A |  | 100% |  |  |  |  | 3h | 3h | 300 | 300 |
| 8 | 1.1.5.1 | Estimar tamanho do projeto | 1d | 2018-06-01 09:00 A | 2018-06-02 13:00 A | 6 | 100% |  |  |  | Tássio | 2h | 2h | 200 | 200 |
| 9 | 1.1.5.2 | Revisar Estimativa de Tamanho do projeto | 1d | 2018-06-02 14:00 A | 2018-06-03 18:00 A | 8 | 100% |  |  |  | Carol | 1h | 1h | 100 | 100 |
| 10 | 1.1.6 | **Estimativa.Prel.Crono** | 3d | 2018-06-04 09:00 A | 2018-06-06 18:00 A |  | 100% |  |  |  |  | 4h | 4h | 400 | 400 |
| 11 | 1.1.6.1 | Elaborar Cronograma Preliminar | 1d | 2018-06-04 09:00 A | 2018-06-05 13:00 A | 9 | 100% |  |  |  | Tássio | 3h | 3h | 300 | 300 |
| 12 | 1.1.6.2 | Revisar Cronograma Preliminar | 1d | 2018-06-05 14:00 A | 2018-06-06 18:00 A | 11 | 100% |  |  |  | Carol | 1h | 1h | 100 | 100 |
| 13 | 1.2 | **Análise** | 9.62d? | 2018-06-07 00:00 A | 2018-06-20 15:00 A | 12 | 100% |  |  |  |  | 52.04h | 52.04h | 5,204.35 | 5,204.35 |
| 14 | 1.2.1 | Reunir com Fornecedor de Requisitos | 1d | 2018-06-07 00:00 A | 2018-06-08 03:00 A | 6 | 100% |  |  |  | Daniel | 1.04h | 1.04h | 104.35 | 104.35 |
| 15 | 1.2.2 | **DRE** | 3d | 2018-06-08 03:00 A | 2018-06-12 18:00 A |  | 100% |  |  |  |  | 18h | 18h | 1,800 | 1,800 |
| 16 | 1.2.2.1 | Redigir DRE Definitivo | 2.62d | 2018-06-08 03:00 A | 2018-06-12 04:00 A | 14 | 100% |  |  |  | Daniel | 15h | 15h | 1,500 | 1,500 |
| 17 | 1.2.2.2 | Revisar DRE Definitivo | 0.38d | 2018-06-12 14:00 A | 2018-06-12 18:00 A | 16 | 100% |  |  |  | Carol | 3h | 3h | 300 | 300 |
| 18 | 1.2.3 | **MRB** | 2.5d? | 2018-06-13 14:00 A | 2018-06-18 02:00 A |  | 100% |  |  |  |  | 12h | 12h | 1,200 | 1,200 |
| 19 | 1.2.3.1 | Elaborar MRB | 1.25d | 2018-06-13 14:00 A | 2018-06-17 16:00 A | 17 | 100% |  |  |  | Carol | 10h | 10h | 1,000 | 1,000 |
| 20 | 1.2.3.2 | Revisar MRB | 0.25d? | 2018-06-18 00:00 A | 2018-06-18 02:00 A | 19 | 100% |  |  |  | Daniel | 2h | 2h | 200 | 200 |
| 21 | 1.2.4 | **Estimativa final** | 2.25d? | 2018-06-13 09:00 A | 2018-06-15 11:00 A |  | 100% |  |  |  |  | 10h | 10h | 1,000 | 1,000 |
| 22 | 1.2.4.1 | Elaborar estimativa final | 1.25d? | 2018-06-13 09:00 A | 2018-06-15 11:00 A | 17 | 100% |  |  |  | Tássio | 10h | 10h | 1,000 | 1,000 |
| 23 | 1.2.5 | **Cronograma definitivo** | 3.38d? | 2018-06-15 11:00 A | 2018-06-20 15:00 A |  | 100% |  |  |  |  | 11h | 11h | 1,100 | 1,100 |
| 24 | 1.2.5.1 | Atualizar Cronograma | 0.38d? | 2018-06-15 11:00 A | 2018-06-16 10:00 A | 22 | 100% |  |  |  | Tássio | 3h | 3h | 300 | 300 |
| 25 | 1.2.5.2 | Revisar Cronograma | 1d | 2018-06-16 14:00 A | 2018-06-20 15:00 A | 24 | 100% |  |  |  | Carol | 8h | 8h | 800 | 800 |

| ID | WBS | Task | Duration | Start | Finish | Predecessors | Complete | Remaining | Total slack | Resources | Work | Actual work | Cost | Actual cost |
| --- | --- | --- | --- | --- | --- | --- | --- | --- | --- | --- | --- | --- | --- | --- |
| 26 | 1.3 | **Projeto** | 2.38d? | 2018-06-20 15:00 A | 2018-06-24 17:00 A | 25 | 100% |  |  |  | 13h | 13h | 1,300 | 1,300 |
| 27 | 1.3.1 | **Diagrama de Classes** | 2.38d? | 2018-06-20 15:00 A | 2018-06-23 16:00 A |  | 100% |  |  |  | 8h | 8h | 800 | 800 |
| 28 | 1.3.1.1 | Elaborar diagrama de Classes | 0.62d? | 2018-06-20 15:00 A | 2018-06-21 16:00 A | 20 | 100% |  |  | Carol | 5h | 5h | 500 | 500 |
| 29 | 1.3.1.2 | Revisar Diagrama de Classes | 0.12d? | 2018-06-22 00:00 A | 2018-06-22 01:00 A | 28 | 100% |  |  | Daniel | 1h | 1h | 100 | 100 |
| 30 | 1.3.1.3 | Atualizar MRB | 0.25d | 2018-06-22 14:00 A | 2018-06-23 16:00 A | 29 | 100% |  |  | Carol | 2h | 2h | 200 | 200 |
| 31 | 1.3.2 | **Modelo Entidade Relacionamento** | 0d | 2018-06-23 16:00 A | 2018-06-24 17:00 A |  | 100% |  |  |  | 5h | 5h | 500 | 500 |
| 32 | 1.3.2.1 | Elaborar MER | 0.38d | 2018-06-23 16:00 A | 2018-06-24 15:00 A | 30 | 100% |  |  | Carol | 3h | 3h | 300 | 300 |
| 33 | 1.3.2.2 | Revisar MER | 0.25d | 2018-06-24 15:00 A | 2018-06-24 17:00 A | 32 | 100% |  |  | Carol | 2h | 2h | 200 | 200 |
| 34 | 1.4 | **Implementação** | 25d? | 2018-06-24 17:00 A | 2018-07-28 02:00 | 30 | 22% | 19.51d? | 0d |  | 182h | 40h | 18,200 | 4,000 |
| 35 | 1.4.1 | Estudo da ferramenta de desenvolvimento | 1.25d? | 2018-06-24 17:00 | 2018-06-29 09:20 | 33 |  |  | 20.38d | Tássio; Carol; Daniel | 10h |  | 1,000 |  |
| 36 | 1.4.2 | **Release 01** | 5.5d? | 2018-06-29 14:00 A | 2018-07-08 13:00 |  | 91% | 0.5d? | 0d |  | 44h | 40h | 4,400 | 4,000 |
| 37 | 1.4.2.1 | **CRUDE Funcionário** | 2.5d | 2018-06-29 14:00 A | 2018-07-03 18:00 A |  | 100% |  |  |  | 20h | 20h | 2,000 | 2,000 |
| 38 | 1.4.2.1.1 | Implementar RFS01 | 0.62d | 2018-06-29 14:00 A | 2018-06-30 15:00 A | 35 | 100% |  |  | Carol | 5h | 5h | 500 | 500 |
| 39 | 1.4.2.1.2 | Implementar RFS02 | 0.62d | 2018-06-30 15:00 A | 2018-07-01 16:00 A | 38 | 100% |  |  | Carol | 5h | 5h | 500 | 500 |
| 40 | 1.4.2.1.3 | Implementar RFS03 | 0.62d | 2018-07-01 16:00 A | 2018-07-02 17:00 A | 39 | 100% |  |  | Carol | 5h | 5h | 500 | 500 |
| 41 | 1.4.2.1.4 | Implementar RFS04 | 0.62d | 2018-07-02 17:00 A | 2018-07-03 18:00 A | 40 | 100% |  |  | Carol | 5h | 5h | 500 | 500 |
| 42 | 1.4.2.2 | **CRUDE Usuário** | 3d? | 2018-07-04 09:00 A | 2018-07-08 13:00 A |  | 100% |  |  |  | 20h | 20h | 2,000 | 2,000 |
| 43 | 1.4.2.2.1 | Implementar RFS05 | 0.62d? | 2018-07-04 09:00 A | 2018-07-05 10:00 A | 41 | 100% |  |  | Tássio | 5h | 5h | 500 | 500 |
| 44 | 1.4.2.2.2 | Implementar RFS06 | 0.62d? | 2018-07-05 10:00 A | 2018-07-06 11:00 A | 43 | 100% |  |  | Tássio | 5h | 5h | 500 | 500 |
| 45 | 1.4.2.2.3 | Implementar RFS07 | 0.62d? | 2018-07-06 11:00 A | 2018-07-07 12:00 A | 44 | 100% |  |  | Tássio | 5h | 5h | 500 | 500 |
| 46 | 1.4.2.2.4 | Implementar RFS08 | 0.62d? | 2018-07-07 12:00 A | 2018-07-08 13:00 A | 45 | 100% |  |  | Tássio | 5h | 5h | 500 | 500 |
| 47 | 1.4.2.3 | **Teste** | 0d? | 2018-07-04 00:00 | 2018-07-04 04:00 |  |  |  | 0d |  | 4h |  | 400 |  |
| 48 | 1.4.2.3.1 | Testar CRUDE Funcionário | 0.25d? | 2018-07-04 00:00 | 2018-07-04 02:00 | 41 |  |  | 0d | Daniel | 2h |  | 200 |  |
| 49 | 1.4.2.3.2 | Testar CRUDE Usuário | 0.25d? | 2018-07-04 02:00 | 2018-07-04 04:00 | 48 |  |  | 0d | Daniel | 2h |  | 200 |  |

| ID | WBS | Task | Duration | Start | Finish | Predecessors | Total slack | Free slack | Resources | Work | Cost |
| --- | --- | --- | --- | --- | --- | --- | --- | --- | --- | --- | --- |
| 50 | 1.4.3 | **Release 02** | 7.75d? | 2018-07-04 04:00 | 2018-07-13 16:00 |  | 1d |  |  | 44h | 4,400 |
| 51 | 1.4.3.1 | **CRUDE Cliente** | 3d? | 2018-07-04 04:00 | 2018-07-08 04:00 |  | 0d |  |  | 20h | 2,000 |
| 52 | 1.4.3.1.1 | Implementar RFS 09 | 0.62d? | 2018-07-04 04:00 | 2018-07-05 04:00 | 49 | 0d |  | Daniel | 5h | 500 |
| 53 | 1.4.3.1.2 | Implementar RFS 10 | 0.62d | 2018-07-05 04:00 | 2018-07-06 04:00 | 52 | 0d |  | Daniel | 5h | 500 |
| 54 | 1.4.3.1.3 | Implementar RFS 11 | 0.62d | 2018-07-06 04:00 | 2018-07-07 04:00 | 53 | 0d |  | Daniel | 5h | 500 |
| 55 | 1.4.3.1.4 | Implementar RFS 12 | 0.62d | 2018-07-07 04:00 | 2018-07-08 04:00 | 54 | 0d |  | Daniel | 5h | 500 |
| 56 | 1.4.3.2 | **CRUDE Fornecedor** | 4.75d | 2018-07-08 14:00 | 2018-07-13 16:00 |  | 0d |  |  | 20h | 2,000 |
| 57 | 1.4.3.2.1 | Implementar RFS 13 | 0.62d | 2018-07-08 14:00 | 2018-07-09 15:00 | 55 | 0d |  | Carol | 5h | 500 |
| 58 | 1.4.3.2.2 | Implementar RFS 14 | 0.62d | 2018-07-09 15:00 | 2018-07-10 16:00 | 57 | 0.12d | 0d | Carol | 5h | 500 |
| 59 | 1.4.3.2.3 | Implementar RFS 15 | 0.62d | 2018-07-10 16:00 | 2018-07-11 17:00 | 58 | 0.12d | 0d | Carol | 5h | 500 |
| 60 | 1.4.3.2.4 | Implementar RFS 16 | 0.62d | 2018-07-11 17:00 | 2018-07-13 16:00 | 59 | 10.25d |  | Carol | 5h | 500 |
| 61 | 1.4.3.3 | **Teste** | 0.38d? | 2018-07-12 09:00 | 2018-07-12 13:00 |  | 0d |  |  | 4h | 400 |
| 62 | 1.4.3.3.1 | Teste CRUDE Cliente | 0.25d? | 2018-07-12 09:00 | 2018-07-12 11:00 | 59 | 0d |  | Tássio | 2h | 200 |
| 63 | 1.4.3.3.2 | Teste CRUDE Fornecedor | 0.25d? | 2018-07-12 11:00 | 2018-07-12 13:00 | 62 | 0d |  | Tássio | 2h | 200 |
| 64 | 1.4.4 | **Release 03** | 5.75d? | 2018-07-13 00:00 | 2018-07-20 16:00 |  | 0d |  |  | 44h | 4,400 |
| 65 | 1.4.4.1 | **CRUDE Pedido** | 1d | 2018-07-13 00:00 | 2018-07-16 05:00 |  | 0d |  |  | 20h | 2,000 |
| 66 | 1.4.4.1.1 | Implementar RFS 17 | 0.62d | 2018-07-13 00:00 | 2018-07-13 05:00 | 63 | 0d |  | Daniel | 5h | 500 |
| 67 | 1.4.4.1.2 | Implementar RFS 18 | 0.62d | 2018-07-14 00:00 | 2018-07-14 05:00 | 66 | 0d |  | Daniel | 5h | 500 |
| 68 | 1.4.4.1.3 | Implementar RFS 19 | 0.62d | 2018-07-15 00:00 | 2018-07-15 05:00 | 67 | 0d |  | Daniel | 5h | 500 |
| 69 | 1.4.4.1.4 | Implementar RFS 20 | 0.62d | 2018-07-16 00:00 | 2018-07-16 05:00 | 68 | 0d |  | Daniel | 5h | 500 |
| 70 | 1.4.4.2 | **CRUDE Produto** | 4.38d | 2018-07-16 09:00 | 2018-07-20 13:00 |  | 0d |  |  | 20h | 2,000 |
| 71 | 1.4.4.2.1 | Implementar RFS 21 | 0.62d | 2018-07-16 09:00 | 2018-07-17 10:00 | 69 | 0d |  | Tássio | 5h | 500 |
| 72 | 1.4.4.2.2 | Implementar RFS 22 | 0.62d | 2018-07-17 10:00 | 2018-07-18 11:00 | 71 | 0d |  | Tássio | 5h | 500 |
| 73 | 1.4.4.2.3 | Implementar RFS 23 | 0.62d | 2018-07-18 11:00 | 2018-07-19 12:00 | 72 | 0d |  | Tássio | 5h | 500 |
| 74 | 1.4.4.2.4 | Implementar RFS 24 | 0.62d | 2018-07-19 12:00 | 2018-07-20 13:00 | 73 | 0d |  | Tássio | 5h | 500 |

| ID | WBS | Task | Duration | Start | Finish | Predecessors | Total slack | Free slack | Resources | Work | Cost |
| --- | --- | --- | --- | --- | --- | --- | --- | --- | --- | --- | --- |
| 75 | 1.4.4.3 | **Teste** | 4.25d? | 2018-07-16 14:00 | 2018-07-20 16:00 |  | 4.25d |  |  | 4h | 400 |
| 76 | 1.4.4.3.1 | Teste CRUDE Pedido | 0.25d? | 2018-07-16 14:00 | 2018-07-16 16:00 | 69 | 9.25d |  | Carol | 2h | 200 |
| 77 | 1.4.4.3.2 | Teste CRUDE Produto | 0.25d? | 2018-07-20 14:00 | 2018-07-20 16:00 | 74 | 0.25d | 0d | Carol | 2h | 200 |
| 78 | 1.4.5 | **Release 04** | 4.5d? | 2018-07-20 16:00 | 2018-07-27 11:00 |  | 0.12d |  |  | 30h | 3,000 |
| 79 | 1.4.5.1 | Implementar RFS 25 | 0.75d? | 2018-07-20 16:00 | 2018-07-21 18:00 | 77 | 0d |  | Carol | 6h | 600 |
| 80 | 1.4.5.2 | Implementar RFS 26 | 0.75d | 2018-07-22 14:00 | 2018-07-23 16:00 | 79 | 0d |  | Carol | 6h | 600 |
| 81 | 1.4.5.3 | Implementar RFS 27 | 0.75d | 2018-07-24 00:00 | 2018-07-25 01:00 | 80 | 0d |  | Daniel | 6h | 600 |
| 82 | 1.4.5.4 | Implementar RFS 28 | 0.75d | 2018-07-25 01:00 | 2018-07-26 02:00 | 81 | 0d |  | Daniel | 6h | 600 |
| 83 | 1.4.5.5 | Implementar RFS 29 | 0.75d | 2018-07-26 09:00 | 2018-07-27 11:00 | 82 | 0.12d |  | Tássio | 6h | 600 |
| 84 | 1.4.6 | **Teste** | 5d? | 2018-07-22 09:00 | 2018-07-28 02:00 |  | 0d |  |  | 10h | 1,000 |
| 85 | 1.4.6.1 | Testar RFS 25 | 0.25d? | 2018-07-22 09:00 | 2018-07-22 11:00 | 79 | 4.25d |  | Tássio | 2h | 200 |
| 86 | 1.4.6.2 | Testar RFS 26 | 0.25d? | 2018-07-24 09:00 | 2018-07-24 11:00 | 80 | 3.12d |  | Tássio | 2h | 200 |
| 87 | 1.4.6.3 | Testar RFS 27 | 0.25d? | 2018-07-25 14:00 | 2018-07-25 16:00 | 81 | 2.25d |  | Carol | 2h | 200 |
| 88 | 1.4.6.4 | Testar RFS 28 | 0.25d? | 2018-07-26 14:00 | 2018-07-26 16:00 | 82 | 1.25d |  | Carol | 2h | 200 |
| 89 | 1.4.6.5 | Testar RFS 29 | 0.25d? | 2018-07-28 00:00 | 2018-07-28 02:00 | 83 | 0d |  | Daniel | 2h | 200 |
