# Projeto SCM

Schedule from MS Project, 2018-05-26 to 2018-07-27, costs in R$, A marks actual dates.

## Calendars

- Padrão: Mon-Fri 09:00-12:00, 13:00-18:00; Sat-Sun off.

## Resources

| Resource | Rate |
| --- | --- |
| Daniel | 100 |
| Tássio | 100 |
| Carol | 100 |

## Schedule

| ID | WBS | Task | Duration | Start | Finish | Predecessors | Complete | Remaining | Baseline start | Baseline finish | Baseline duration | Total slack | Constraint | Resources | Work | Actual work | Cost | Baseline cost | Actual cost |
| --- | --- | --- | --- | --- | --- | --- | --- | --- | --- | --- | --- | --- | --- | --- | --- | --- | --- | --- | --- |
| 1 | 1 | **Projeto SCM** | 44d? | 2018-05-26 A | 2018-07-27 |  | 47% | 23.38d? | 2018-05-26 | 2018-07-27 | 44d? | 0d |  |  | 325.2h | 118.8h | 26,300 | 26,300 | 9,730 |
| 2 | 1.1 | **Prospecção** | 8d | 2018-05-26 A | 2018-06-06 A |  | 100% |  | 2018-05-26 | 2018-06-06 | 8d |  |  |  | 15h | 15h | 1,500 | 1,500 | 1,500 |
| 3 | 1.1.1 | Estudar Dominio | 1d | 2018-05-26 A | 2018-05-27 A |  | 100% |  | 2018-05-26 | 2018-05-27 | 1d |  | start no earlier than 2018-05-25 | Daniel | 1h | 1h | 100 | 100 | 100 |
| 4 | 1.1.2 | Reunir com Fornecedor de Requisitos | 1d | 2018-05-27 A | 2018-05-29 A | 3 | 100% |  | 2018-05-27 | 2018-05-29 | 1d |  |  | Daniel | 3h | 3h | 300 | 300 | 300 |
| 5 | 1.1.3 | Redigir DRE Preliminar | 1d | 2018-05-29 A | 2018-05-30 A | 4 | 100% |  | 2018-05-29 | 2018-05-30 | 1d |  |  | Daniel | 3h | 3h | 300 | 300 | 300 |
| 6 | 1.1.4 | Revisar DRE Preliminar | 1d | 2018-05-30 A | 2018-05-31 A | 5 | 100% |  | 2018-05-30 | 2018-05-31 | 1d |  |  | Tássio | 1h | 1h | 100 | 100 | 100 |
| 7 | 1.1.5 | **Estimativa.Prel.Tam** | 1d | 2018-06-01 A | 2018-06-03 A |  | 100% |  | 2018-06-01 | 2018-06-03 | 1d |  |  |  | 3h | 3h | 300 | 300 | 300 |
| 8 | 1.1.5.1 | Estimar tamanho do projeto | 1d | 2018-06-01 A | 2018-06-02 A | 6 | 100% |  | 2018-06-01 | 2018-06-02 | 1d |  |  | Tássio | 2h | 2h | 200 | 200 | 200 |
| 9 | 1.1.5.2 | Revisar Estimativa de Tamanho do projeto | 1d | 2018-06-02 A | 2018-06-03 A | 8 | 100% |  | 2018-06-02 | 2018-06-03 | 1d |  |  | Carol | 1h | 1h | 100 | 100 | 100 |
| 10 | 1.1.6 | **Estimativa.Prel.Crono** | 3d | 2018-06-04 A | 2018-06-06 A |  | 100% |  | 2018-06-04 | 2018-06-06 | 3d |  |  |  | 4h | 4h | 400 | 400 | 400 |
| 11 | 1.1.6.1 | Elaborar Cronograma Preliminar | 1d | 2018-06-04 A | 2018-06-05 A | 9 | 100% |  | 2018-06-04 | 2018-06-05 | 1d |  |  | Tássio | 3h | 3h | 300 | 300 | 300 |
| 12 | 1.1.6.2 | Revisar Cronograma Preliminar | 1d | 2018-06-05 A | 2018-06-06 A | 11 | 100% |  | 2018-06-05 | 2018-06-06 | 1d |  |  | Carol | 1h | 1h | 100 | 100 | 100 |
| 13 | 1.2 | **Análise** | 10.62d? | 2018-06-07 A | 2018-06-21 A | 12 | 100% |  | 2018-06-07 | 2018-06-21 | 10.62d? |  |  |  | 53h | 53h | 5,300 | 5,300 | 5,300 |
| 14 | 1.2.1 | Reunir com Fornecedor de Requisitos | 1.12d | 2018-06-07 A | 2018-06-08 A | 6 | 100% |  | 2018-06-07 | 2018-06-08 | 1.12d |  |  | Daniel | 2h | 2h | 200 | 200 | 200 |
| 15 | 1.2.2 | **DRE** | 3d | 2018-06-08 A | 2018-06-12 A |  | 100% |  | 2018-06-08 | 2018-06-12 | 3d |  |  |  | 18h | 18h | 1,800 | 1,800 | 1,800 |
| 16 | 1.2.2.1 | Redigir DRE Definitivo | 2.62d | 2018-06-08 A | 2018-06-12 A | 14 | 100% |  | 2018-06-08 | 2018-06-12 | 2.62d |  |  | Daniel | 15h | 15h | 1,500 | 1,500 | 1,500 |
| 17 | 1.2.2.2 | Revisar DRE Definitivo | 0.38d | 2018-06-12 A | 2018-06-12 A | 16 | 100% |  | 2018-06-12 | 2018-06-12 | 0.38d |  |  | Carol | 3h | 3h | 300 | 300 | 300 |
| 18 | 1.2.3 | **MRB** | 2.5d? | 2018-06-13 A | 2018-06-18 A |  | 100% |  | 2018-06-13 | 2018-06-18 | 2.5d? |  |  |  | 12h | 12h | 1,200 | 1,200 | 1,200 |
| 19 | 1.2.3.1 | Elaborar MRB | 1.25d | 2018-06-13 A | 2018-06-17 A | 17 | 100% |  | 2018-06-13 | 2018-06-17 | 1.25d |  |  | Carol | 10h | 10h | 1,000 | 1,000 | 1,000 |
| 20 | 1.2.3.2 | Revisar MRB | 0.25d? | 2018-06-18 A | 2018-06-18 A | 19 | 100% |  | 2018-06-18 | 2018-06-18 | 0.25d? |  |  | Daniel | 2h | 2h | 200 | 200 | 200 |
| 21 | 1.2.4 | **Estimativa final** | 2.25d? | 2018-06-13 A | 2018-06-15 A |  | 100% |  | 2018-06-13 | 2018-06-15 | 2.25d? |  |  |  | 10h | 10h | 1,000 | 1,000 | 1,000 |
| 22 | 1.2.4.1 | Elaborar estimativa final | 1.25d? | 2018-06-13 A | 2018-06-15 A | 17 | 100% |  | 2018-06-13 | 2018-06-15 | 1.25d? |  |  | Tássio | 10h | 10h | 1,000 | 1,000 | 1,000 |
| 23 | 1.2.5 | **Cronograma definitivo** | 4.38d? | 2018-06-15 A | 2018-06-21 A |  | 100% |  | 2018-06-15 | 2018-06-21 | 4.38d? |  |  |  | 11h | 11h | 1,100 | 1,100 | 1,100 |
| 24 | 1.2.5.1 | Atualizar Cronograma | 0.38d? | 2018-06-15 A | 2018-06-16 A | 22 | 100% |  | 2018-06-15 | 2018-06-16 | 0.38d? |  |  | Tássio | 3h | 3h | 300 | 300 | 300 |
| 25 | 1.2.5.2 | Revisar Cronograma | 1d | 2018-06-17 A | 2018-06-21 A | 24 | 100% |  | 2018-06-17 | 2018-06-21 | 1d |  |  | Carol | 8h | 8h | 800 | 800 | 800 |

| ID | WBS | Task | Type | Duration | Start | Finish | Predecessors | Complete | Remaining | Actual finish | Baseline start | Baseline finish | Baseline duration | Total slack | Free slack | Resources | Work | Actual work | Cost | Baseline cost | Actual cost |
| --- | --- | --- | --- | --- | --- | --- | --- | --- | --- | --- | --- | --- | --- | --- | --- | --- | --- | --- | --- | --- | --- |
| 26 | 1.3 | **Projeto** |  | 3.04d? | 2018-06-21 A | 2018-06-26 A | 25 | 100% |  |  | 2018-06-21 | 2018-06-26 | 3.04d? |  |  |  | 13h | 13h | 1,300 | 1,300 | 1,300 |
| 27 | 1.3.1 | **Diagrama de Classes** |  | 1.38d? | 2018-06-21 A | 2018-06-24 A |  | 100% |  |  | 2018-06-21 | 2018-06-24 | 1.38d? |  |  |  | 8h | 8h | 800 | 800 | 800 |
| 28 | 1.3.1.1 | Elaborar diagrama de Classes |  | 0.62d? | 2018-06-21 A | 2018-06-22 A | 20 | 100% |  |  | 2018-06-21 | 2018-06-22 | 0.62d? |  |  | Carol | 5h | 5h | 500 | 500 | 500 |
| 29 | 1.3.1.2 | Revisar Diagrama de Classes |  | 0.12d? | 2018-06-23 A | 2018-06-23 A | 28 | 100% |  |  | 2018-06-23 | 2018-06-23 | 0.12d? |  |  | Daniel | 1h | 1h | 100 | 100 | 100 |
| 30 | 1.3.1.3 | Atualizar MRB |  | 0.25d | 2018-06-23 A | 2018-06-24 A | 29 | 100% |  |  | 2018-06-23 | 2018-06-24 | 0.25d |  |  | Carol | 2h | 2h | 200 | 200 | 200 |
| 31 | 1.3.2 | **Modelo Entidade Relacionamento** |  | 1.67d | 2018-06-24 A | 2018-06-26 A |  | 100% |  |  | 2018-06-24 | 2018-06-26 | 1.67d |  |  |  | 5h | 5h | 500 | 500 | 500 |
| 32 | 1.3.2.1 | Elaborar MER |  | 0.38d | 2018-06-24 A | 2018-06-25 A | 30 | 100% |  |  | 2018-06-24 | 2018-06-25 | 0.38d |  |  | Carol | 3h | 3h | 300 | 300 | 300 |
| 33 | 1.3.2.2 | Revisar MER |  | 0.25d | 2018-06-25 A | 2018-06-26 A | 32 | 100% |  |  | 2018-06-25 | 2018-06-26 | 0.25d |  |  | Carol | 2h | 2h | 200 | 200 | 200 |
| 34 | 1.4 | **Planejamento** |  | 0d | 2018-05-26 A | 2018-05-26 A |  | 100% |  |  | 2018-05-26 | 2018-05-26 | 0d |  |  |  | 21.5h | 21.5h |  |  |  |
| 35 | 1.4.1 | Fase de planejamento? | manual | 1d | 2018-05-26 A | 2018-05-26 A |  | 100% |  |  | 2018-05-26 | 2018-05-26 | 1d |  |  |  | 21.5h | 21.5h |  |  |  |
| 36 | 1.5 | **Implementação** |  | 19d? | 2018-06-30 A | 2018-07-27 | 30 | 9% | 17.3d? |  | 2018-06-26 | 2018-07-27 | 22.33d? | 0d |  |  | 182h | 16.3h | 18,200 | 18,200 | 1,630 |
| 37 | 1.5.1 | Estudo da ferramenta de desenvolvimento |  | 1.25d? | 2018-06-30 A | 2018-07-01 | 33 | 100% |  | 2018-07-04 | 2018-06-26 | 2018-07-01 | 1.25d? |  |  | Tássio; Carol; Daniel | 10h | 10h | 1,000 | 1,000 | 1,000 |
| 38 | 1.5.2 | **Release 01** |  | 6.38d? | 2018-07-01 A | 2018-07-10 |  | 5% | 6.07d? |  | 2018-07-01 | 2018-07-10 | 6.38d? | 12d |  |  | 44h | 2.1h | 4,400 | 4,400 | 210 |
| 39 | 1.5.2.1 | **CRUDE Funcionário** |  | 4d | 2018-07-01 A | 2018-07-05 |  | 5% | 3.8d |  | 2018-07-01 | 2018-07-05 | 4d | 0d |  |  | 20h | 1h | 2,000 | 2,000 | 100 |
| 40 | 1.5.2.1.1 | Implementar RFS01 |  | 0.62d | 2018-07-01 A | 2018-07-02 | 37 | 5% | 0.59d |  | 2018-07-01 | 2018-07-02 | 0.62d | 0.03d | 0d | Carol | 5h | 0.25h | 500 | 500 | 25 |
| 41 | 1.5.2.1.2 | Implementar RFS02 |  | 0.62d | 2018-07-02 A | 2018-07-03 | 40 | 5% | 0.59d |  | 2018-07-02 | 2018-07-03 | 0.62d | 0.03d | 0d | Carol | 5h | 0.25h | 500 | 500 | 25 |
| 42 | 1.5.2.1.3 | Implementar RFS03 |  | 0.62d | 2018-07-03 A | 2018-07-04 | 41 | 5% | 0.59d |  | 2018-07-03 | 2018-07-04 | 0.62d | 0.03d | 0d | Carol | 5h | 0.25h | 500 | 500 | 25 |
| 43 | 1.5.2.1.4 | Implementar RFS04 |  | 0.62d | 2018-07-04 A | 2018-07-05 | 42 | 5% | 0.59d |  | 2018-07-04 | 2018-07-05 | 0.62d | 0d |  | Carol | 5h | 0.25h | 500 | 500 | 25 |
| 44 | 1.5.2.2 | **CRUDE Usuário** |  | 2.38d? | 2018-07-06 A | 2018-07-10 |  | 4% | 2.28d? |  | 2018-07-06 | 2018-07-10 | 2.38d? | 12d |  |  | 20h | 0.8h | 2,000 | 2,000 | 80 |
| 45 | 1.5.2.2.1 | Implementar RFS05 |  | 0.62d? | 2018-07-06 A | 2018-07-07 | 43 | 4% | 0.6d? |  | 2018-07-06 | 2018-07-07 | 0.62d? | 0d |  | Tássio | 5h | 0.2h | 500 | 500 | 20 |
| 46 | 1.5.2.2.2 | Implementar RFS06 |  | 0.62d? | 2018-07-07 A | 2018-07-08 | 45 | 4% | 0.6d? |  | 2018-07-07 | 2018-07-08 | 0.62d? | 0d |  | Tássio | 5h | 0.2h | 500 | 500 | 20 |
| 47 | 1.5.2.2.3 | Implementar RFS07 |  | 0.62d? | 2018-07-08 A | 2018-07-09 | 46 | 4% | 0.6d? |  | 2018-07-08 | 2018-07-09 | 0.62d? | 1d | 0d | Tássio | 5h | 0.2h | 500 | 500 | 20 |
| 48 | 1.5.2.2.4 | Implementar RFS08 |  | 0.62d? | 2018-07-09 A | 2018-07-10 | 47 | 4% | 0.6d? |  | 2018-07-09 | 2018-07-10 | 0.62d? | 12d |  | Tássio | 5h | 0.2h | 500 | 500 | 20 |
| 49 | 1.5.2.3 | **Teste** |  | 0d? | 2018-07-06 A | 2018-07-06 |  | 8% | 0d? |  | 2018-07-06 | 2018-07-06 | 0d? | 0d |  |  | 4h | 0.3h | 400 | 400 | 30 |
| 50 | 1.5.2.3.1 | Testar CRUDE Funcionário |  | 0.25d? | 2018-07-06 A | 2018-07-06 | 43 | 8% | 0.23d? |  | 2018-07-06 | 2018-07-06 | 0.25d? | 0d |  | Daniel | 2h | 0.15h | 200 | 200 | 15 |
| 51 | 1.5.2.3.2 | Testar CRUDE Usuário |  | 0.25d? | 2018-07-06 A | 2018-07-06 | 50 | 8% | 0.23d? |  | 2018-07-06 | 2018-07-06 | 0.25d? | 0d |  | Daniel | 2h | 0.15h | 200 | 200 | 15 |

| ID | WBS | Task | Duration | Start | Finish | Predecessors | Complete | Remaining | Baseline start | Baseline finish | Baseline duration | Total slack | Free slack | Resources | Work | Actual work | Cost | Baseline cost | Actual cost |
| --- | --- | --- | --- | --- | --- | --- | --- | --- | --- | --- | --- | --- | --- | --- | --- | --- | --- | --- | --- |
| 52 | 1.5.3 | **Release 02** | 6d? | 2018-07-06 A | 2018-07-15 |  | 5% | 5.71d? | 2018-07-06 | 2018-07-15 | 6d? | 9d |  |  | 44h | 2.1h | 4,400 | 4,400 | 210 |
| 53 | 1.5.3.1 | **CRUDE Cliente** | 2d? | 2018-07-06 A | 2018-07-10 |  | 5% | 1.9d? | 2018-07-06 | 2018-07-10 | 2d? | 0d |  |  | 20h | 1h | 2,000 | 2,000 | 100 |
| 54 | 1.5.3.1.1 | Implementar RFS 09 | 0.62d? | 2018-07-06 A | 2018-07-07 | 51 | 5% | 0.59d? | 2018-07-06 | 2018-07-07 | 0.62d? | 0d |  | Daniel | 5h | 0.25h | 500 | 500 | 25 |
| 55 | 1.5.3.1.2 | Implementar RFS 10 | 0.62d | 2018-07-07 A | 2018-07-08 | 54 | 5% | 0.59d | 2018-07-07 | 2018-07-08 | 0.62d | 0d |  | Daniel | 5h | 0.25h | 500 | 500 | 25 |
| 56 | 1.5.3.1.3 | Implementar RFS 11 | 0.62d | 2018-07-08 A | 2018-07-09 | 55 | 5% | 0.59d | 2018-07-08 | 2018-07-09 | 0.62d | 0d |  | Daniel | 5h | 0.25h | 500 | 500 | 25 |
| 57 | 1.5.3.1.4 | Implementar RFS 12 | 0.62d | 2018-07-09 A | 2018-07-10 | 56 | 5% | 0.59d | 2018-07-09 | 2018-07-10 | 0.62d | 0d |  | Daniel | 5h | 0.25h | 500 | 500 | 25 |
| 58 | 1.5.3.2 | **CRUDE Fornecedor** | 3.5d | 2018-07-10 A | 2018-07-15 |  | 4% | 3.36d | 2018-07-10 | 2018-07-15 | 3.5d | 9d |  |  | 20h | 0.8h | 2,000 | 2,000 | 80 |
| 59 | 1.5.3.2.1 | Implementar RFS 13 | 0.62d | 2018-07-10 A | 2018-07-11 | 57 | 4% | 0.6d | 2018-07-10 | 2018-07-11 | 0.62d | 0.03d | 0d | Carol | 5h | 0.2h | 500 | 500 | 20 |
| 60 | 1.5.3.2.2 | Implementar RFS 14 | 0.62d | 2018-07-11 A | 2018-07-12 | 59 | 4% | 0.6d | 2018-07-11 | 2018-07-12 | 0.62d | 0.03d | 0d | Carol | 5h | 0.2h | 500 | 500 | 20 |
| 61 | 1.5.3.2.3 | Implementar RFS 15 | 0.62d | 2018-07-12 A | 2018-07-13 | 60 | 4% | 0.6d | 2018-07-12 | 2018-07-13 | 0.62d | 0.12d | 0d | Carol | 5h | 0.2h | 500 | 500 | 20 |
| 62 | 1.5.3.2.4 | Implementar RFS 16 | 0.62d | 2018-07-13 A | 2018-07-15 | 61 | 4% | 0.6d | 2018-07-13 | 2018-07-15 | 0.62d | 9d |  | Carol | 5h | 0.2h | 500 | 500 | 20 |
| 63 | 1.5.3.3 | **Teste** | 0.38d? | 2018-07-11 A | 2018-07-11 |  | 8% | 0.35d? | 2018-07-11 | 2018-07-11 | 0.38d? | 0d |  |  | 4h | 0.3h | 400 | 400 | 30 |
| 64 | 1.5.3.3.1 | Teste CRUDE Cliente | 0.25d? | 2018-07-11 A | 2018-07-11 | 57 | 8% | 0.23d? | 2018-07-11 | 2018-07-11 | 0.25d? | 0.12d | 0d | Tássio | 2h | 0.15h | 200 | 200 | 15 |
| 65 | 1.5.3.3.2 | Teste CRUDE Fornecedor | 0.25d? | 2018-07-11 A | 2018-07-11 | 64 | 8% | 0.23d? | 2018-07-11 | 2018-07-11 | 0.25d? | 0d |  | Tássio | 2h | 0.15h | 200 | 200 | 15 |
| 66 | 1.5.4 | **Release 03** | 5.75d? | 2018-07-12 A | 2018-07-19 |  | 5% | 5.48d? | 2018-07-12 | 2018-07-19 | 5.75d? | 5.25d |  |  | 44h | 2.1h | 4,400 | 4,400 | 210 |
| 67 | 1.5.4.1 | **CRUDE Pedido** | 2d | 2018-07-12 A | 2018-07-15 |  | 5% | 1.9d | 2018-07-12 | 2018-07-15 | 2d | 0d |  |  | 20h | 1h | 2,000 | 2,000 | 100 |
| 68 | 1.5.4.1.1 | Implementar RFS 17 | 0.62d | 2018-07-12 A | 2018-07-12 | 65 | 5% | 0.59d | 2018-07-12 | 2018-07-12 | 0.62d | 1d |  | Daniel | 5h | 0.25h | 500 | 500 | 25 |
| 69 | 1.5.4.1.2 | Implementar RFS 18 | 0.62d | 2018-07-13 A | 2018-07-13 | 68 | 5% | 0.59d | 2018-07-13 | 2018-07-13 | 0.62d | 1d |  | Daniel | 5h | 0.25h | 500 | 500 | 25 |
| 70 | 1.5.4.1.3 | Implementar RFS 19 | 0.62d | 2018-07-14 A | 2018-07-14 | 69 | 5% | 0.59d | 2018-07-14 | 2018-07-14 | 0.62d | 0d |  | Daniel | 5h | 0.25h | 500 | 500 | 25 |
| 71 | 1.5.4.1.4 | Implementar RFS 20 | 0.62d | 2018-07-15 A | 2018-07-15 | 70 | 5% | 0.59d | 2018-07-15 | 2018-07-15 | 0.62d | 0d |  | Daniel | 5h | 0.25h | 500 | 500 | 25 |
| 72 | 1.5.4.2 | **CRUDE Produto** | 3.38d | 2018-07-15 A | 2018-07-19 |  | 4% | 3.24d | 2018-07-15 | 2018-07-19 | 3.38d | 0d |  |  | 20h | 0.8h | 2,000 | 2,000 | 80 |
| 73 | 1.5.4.2.1 | Implementar RFS 21 | 0.62d | 2018-07-15 A | 2018-07-16 | 71 | 4% | 0.6d | 2018-07-15 | 2018-07-16 | 0.62d | 0.03d | 0d | Tássio | 5h | 0.2h | 500 | 500 | 20 |
| 74 | 1.5.4.2.2 | Implementar RFS 22 | 0.62d | 2018-07-16 A | 2018-07-17 | 73 | 4% | 0.6d | 2018-07-16 | 2018-07-17 | 0.62d | 0.03d | 0d | Tássio | 5h | 0.2h | 500 | 500 | 20 |
| 75 | 1.5.4.2.3 | Implementar RFS 23 | 0.62d | 2018-07-17 A | 2018-07-18 | 74 | 4% | 0.6d | 2018-07-17 | 2018-07-18 | 0.62d | 0d |  | Tássio | 5h | 0.2h | 500 | 500 | 20 |
| 76 | 1.5.4.2.4 | Implementar RFS 24 | 0.62d | 2018-07-18 A | 2018-07-19 | 75 | 4% | 0.6d | 2018-07-18 | 2018-07-19 | 0.62d | 0d |  | Tássio | 5h | 0.2h | 500 | 500 | 20 |

| ID | WBS | Task | Type | Duration | Start | Finish | Predecessors | Complete | Remaining | Baseline start | Baseline finish | Baseline duration | Total slack | Free slack | Resources | Work | Actual work | Cost | Baseline cost | Actual cost |
| --- | --- | --- | --- | --- | --- | --- | --- | --- | --- | --- | --- | --- | --- | --- | --- | --- | --- | --- | --- | --- |
| 77 | 1.5.4.3 | **Teste** |  | 3.75d? | 2018-07-15 A | 2018-07-19 |  | 8% | 3.47d? | 2018-07-15 | 2018-07-19 | 3.75d? | 5.25d |  |  | 4h | 0.3h | 400 | 400 | 30 |
| 78 | 1.5.4.3.1 | Teste CRUDE Pedido |  | 0.25d? | 2018-07-15 A | 2018-07-15 | 71 | 8% | 0.23d? | 2018-07-15 | 2018-07-15 | 0.25d? | 9d |  | Carol | 2h | 0.15h | 200 | 200 | 15 |
| 79 | 1.5.4.3.2 | Teste CRUDE Produto |  | 0.25d? | 2018-07-19 A | 2018-07-19 | 76 | 8% | 0.23d? | 2018-07-19 | 2018-07-19 | 0.25d? | 0.25d | 0d | Carol | 2h | 0.15h | 200 | 200 | 15 |
| 80 | 1.5.5 | **Release 04** |  | 4.5d? | 2018-07-19 | 2018-07-26 |  |  |  | 2018-07-19 | 2018-07-26 | 4.5d? | 0.12d |  |  | 30h |  | 3,000 | 3,000 |  |
| 81 | 1.5.5.1 | Implementar RFS 25 |  | 0.75d? | 2018-07-19 | 2018-07-20 | 79 |  |  | 2018-07-19 | 2018-07-20 | 0.75d? | 0d |  | Carol | 6h |  | 600 | 600 |  |
| 82 | 1.5.5.2 | Implementar RFS 26 |  | 0.75d | 2018-07-21 | 2018-07-22 | 81 |  |  | 2018-07-21 | 2018-07-22 | 0.75d | 0d |  | Carol | 6h |  | 600 | 600 |  |
| 83 | 1.5.5.3 | Implementar RFS 27 |  | 0.75d | 2018-07-23 | 2018-07-24 | 82 |  |  | 2018-07-23 | 2018-07-24 | 0.75d | 0d |  | Daniel | 6h |  | 600 | 600 |  |
| 84 | 1.5.5.4 | Implementar RFS 28 |  | 0.75d | 2018-07-24 | 2018-07-25 | 83 |  |  | 2018-07-24 | 2018-07-25 | 0.75d | 0d |  | Daniel | 6h |  | 600 | 600 |  |
| 85 | 1.5.5.5 | Implementar RFS 29 |  | 0.75d | 2018-07-25 | 2018-07-26 | 84 |  |  | 2018-07-25 | 2018-07-26 | 0.75d | 0.12d |  | Tássio | 6h |  | 600 | 600 |  |
| 86 | 1.5.6 | **Teste** |  | 4d? | 2018-07-21 | 2018-07-27 |  |  |  | 2018-07-21 | 2018-07-27 | 4d? | 0d |  |  | 10h |  | 1,000 | 1,000 |  |
| 87 | 1.5.6.1 | Testar RFS 25 |  | 0.25d? | 2018-07-21 | 2018-07-21 | 81 |  |  | 2018-07-21 | 2018-07-21 | 0.25d? | 3.25d |  | Tássio | 2h |  | 200 | 200 |  |
| 88 | 1.5.6.2 | Testar RFS 26 |  | 0.25d? | 2018-07-23 | 2018-07-23 | 82 |  |  | 2018-07-23 | 2018-07-23 | 0.25d? | 3.12d |  | Tássio | 2h |  | 200 | 200 |  |
| 89 | 1.5.6.3 | Testar RFS 27 |  | 0.25d? | 2018-07-24 | 2018-07-24 | 83 |  |  | 2018-07-24 | 2018-07-24 | 0.25d? | 2.25d |  | Carol | 2h |  | 200 | 200 |  |
| 90 | 1.5.6.4 | Testar RFS 28 |  | 0.25d? | 2018-07-25 | 2018-07-25 | 84 |  |  | 2018-07-25 | 2018-07-25 | 0.25d? | 1.25d |  | Carol | 2h |  | 200 | 200 |  |
| 91 | 1.5.6.5 | Testar RFS 29 |  | 0.25d? | 2018-07-27 | 2018-07-27 | 85 |  |  | 2018-07-27 | 2018-07-27 | 0.25d? | 0d |  | Daniel | 2h |  | 200 | 200 |  |
| 92 | 1.6 | **Processo de monitoramento e controle** |  | 1d | 2018-05-30 | 2018-05-30 |  |  |  | 2018-05-30 | 2018-05-30 | 1d | 0d |  |  | 7.2h |  |  |  |  |
| 93 | 1.6.1 | Monitoramento e controle | manual | 1d? | 2018-05-30 | 2018-05-30 |  |  |  | 2018-05-30 | 2018-05-30 | 1d? |  |  |  | 7.2h |  |  |  |  |
| 94 | 1.7 | **Fase de fechamento** |  | 1d | 2018-05-30 | 2018-05-30 |  |  |  | 2018-05-30 | 2018-05-30 | 1d | 0d |  |  | 22h |  |  |  |  |
| 95 | 1.7.1 | Fechamento | manual | 1d? | 2018-05-30 | 2018-05-30 |  |  |  | 2018-05-30 | 2018-05-30 | 1d? |  |  |  | 22h |  |  |  |  |
| 96 | 1.8 | **Controle de mudanças** |  | 1d | 2018-05-30 | 2018-05-30 |  |  |  | 2018-05-30 | 2018-05-30 | 1d | 0d |  |  | 11.5h |  |  |  |  |
| 97 | 1.8.1 | Controle de mudanças | manual | 1d? | 2018-05-30 | 2018-05-30 |  |  |  | 2018-05-30 | 2018-05-30 | 1d? |  |  |  | 11.5h |  |  |  |  |
